# FUFO Highl level plan

Schedule from MS Project, 2012-02-06 to 2012-05-28, A marks actual dates.
Grizli777

## Calendars

- Standard: Mon-Fri 08:00-12:00, 13:00-17:00; Sat-Sun off.

## Resources

| Resource |
| --- |
| NguyenLK |
| PhongVM |
| YenTT |

## Schedule

| ID | WBS | Task | Duration | Start | Finish | Predecessors | Complete | Remaining | Total slack | Constraint | Resources | Work | Actual work |
| --- | --- | --- | --- | --- | --- | --- | --- | --- | --- | --- | --- | --- | --- |
| 1 | 1 | **VP Project** | 80.5d | 2012-02-06 A | 2012-05-28 |  | 5% | 76.56d | 0d |  |  | 1420h | 76h |
| 2 | 1.1 | Make plan | 3d | 2012-02-06 A | 2012-02-08 A |  | 100% |  |  | start no earlier than 2012-02-06 | NguyenLK | 24h | 24h |
| 3 | 1.2 | Review plan and improve | 2d | 2012-02-09 A | 2012-02-10 A | 2 | 100% |  |  |  | NguyenLK; PhongVM; YenTT | 48h | 48h |
| 4 | 1.3 | **Training and design for video sending** | 4.5d | 2012-02-28 A | 2012-03-05 | 3 | 9% | 4.09d | 0d |  |  | 76h | 4h |
| 5 | 1.3.1 | **Make SRS** | 2.5d | 2012-02-28 A | 2012-03-01 |  | 14% | 2.14d | 0d |  |  | 28h | 4h |
| 6 | 1.3.1.1 | Introduction | 0.5d | 2012-02-28 A | 2012-02-28 A |  | 100% |  |  | start no earlier than 2012-02-28 | NguyenLK | 4h | 4h |
| 7 | 1.3.1.2 | Functional requirement | 2d | 2012-02-28 | 2012-03-01 | 6 |  |  | 0d |  | NguyenLK | 16h |  |
| 8 | 1.3.1.3 | Non-functional requirement | 1d | 2012-02-29 | 2012-03-01 | 7FF |  |  | 0d |  | YenTT | 8h |  |
| 9 | 1.3.2 | Review SRS and improve | 2d | 2012-03-01 | 2012-03-05 | 8 |  |  | 0d |  | PhongVM; NguyenLK; YenTT | 48h |  |
| 10 | 1.4 | **Design** | 23d | 2012-03-05 | 2012-04-05 | 4 |  |  | 0d |  |  | 384h |  |
| 11 | 1.4.1 | **Make HLD** | 9d | 2012-03-05 | 2012-03-16 |  |  |  | 0d |  |  | 80h |  |
| 12 | 1.4.1.1 | Introduction | 0.5d | 2012-03-05 | 2012-03-05 |  |  |  | 0d |  | NguyenLK | 4h |  |
| 13 | 1.4.1.2 | High level function description | 1.5d | 2012-03-06 | 2012-03-07 | 12 |  |  | 0d |  | NguyenLK | 12h |  |
| 14 | 1.4.1.3 | System architecture design | 3d | 2012-03-07 | 2012-03-12 | 13 |  |  | 0d |  | NguyenLK | 24h |  |
| 15 | 1.4.1.4 | Screen design | 1d | 2012-03-07 | 2012-03-08 | 14SS |  |  | 20d |  | YenTT | 8h |  |
| 16 | 1.4.1.5 | Application requirement | 1d | 2012-03-12 | 2012-03-13 | 14 |  |  | 0d |  | NguyenLK | 8h |  |
| 17 | 1.4.1.6 | Diagrams (activity,…) | 1d | 2012-03-13 | 2012-03-14 | 16 |  |  | 0d |  | NguyenLK | 8h |  |
| 18 | 1.4.1.7 | Interface | 2d | 2012-03-14 | 2012-03-16 | 17 |  |  | 0d |  | NguyenLK | 16h |  |
| 19 | 1.4.2 | Review HLD and improve | 2d | 2012-03-16 | 2012-03-20 | 18 |  |  | 0d |  | NguyenLK; PhongVM; YenTT | 48h |  |
| 20 | 1.4.3 | **Make DDD** | 10d | 2012-03-20 | 2012-04-03 | 19 |  |  | 0d |  |  | 208h |  |
| 21 | 1.4.3.1 | Function specification | 1d | 2012-03-20 | 2012-03-21 |  |  |  | 0d |  | NguyenLK | 8h |  |
| 22 | 1.4.3.2 | Sequence diagram for all functions | 3d | 2012-03-21 | 2012-03-26 | 21 |  |  | 0d |  | NguyenLK; PhongVM; YenTT | 72h |  |
| 23 | 1.4.3.3 | Class specification | 5d | 2012-03-26 | 2012-04-02 | 22 |  |  | 0d |  | NguyenLK; PhongVM; YenTT | 120h |  |
| 24 | 1.4.3.4 | Screen detail design | 1d | 2012-04-02 | 2012-04-03 | 23 |  |  | 0d |  | YenTT | 8h |  |
| 25 | 1.4.4 | Review DDD | 2d | 2012-04-03 | 2012-04-05 | 24 |  |  | 0d |  | NguyenLK; PhongVM; YenTT | 48h |  |

| ID | WBS | Task | Duration | Start | Finish | Predecessors | Total slack | Free slack | Resources | Work |
| --- | --- | --- | --- | --- | --- | --- | --- | --- | --- | --- |
| 26 | 1.5 | **Coding** | 34d | 2012-04-05 | 2012-05-23 | 10 | 0d |  |  | 816h |
| 27 | 1.5.1 | **Send video over Internet** | 24d | 2012-04-05 | 2012-05-09 |  | 10d | 0d |  | 192h |
| 28 | 1.5.1.1 | Code recording video using back camera on Android | 4d | 2012-04-05 | 2012-04-11 |  | 10d | 0d | NguyenLK | 32h |
| 29 | 1.5.1.2 | Code send frame from phone to computer | 10d | 2012-04-11 | 2012-04-25 | 28 | 10d | 0d | NguyenLK | 80h |
| 30 | 1.5.1.3 | Code receive frame on computer | 10d | 2012-04-25 | 2012-05-09 | 29 | 10d |  | NguyenLK | 80h |
| 31 | 1.5.2 | **Use h263 and h264 on the video sending** | 24d | 2012-04-05 | 2012-05-09 | 27SS | 0d |  |  | 384h |
| 32 | 1.5.2.1 | Reasearch how to compress and decompress video frame using h263 and h264 | 7d | 2012-04-05 | 2012-04-16 |  | 0d |  | PhongVM; YenTT | 112h |
| 33 | 1.5.2.2 | Coding frame compressing function | 17d | 2012-04-16 | 2012-05-09 | 32 | 0d |  | PhongVM | 136h |
| 34 | 1.5.2.3 | Coding frame decompressing function | 17d | 2012-04-16 | 2012-05-09 | 33SS | 0d |  | YenTT | 136h |
| 35 | 1.5.3 | **Improving video sending** | 10d | 2012-05-09 | 2012-05-23 | 31 | 0d |  |  | 240h |
| 36 | 1.5.3.1 | Combine code to send compressed video frame and decomress video frame after sending | 10d | 2012-05-09 | 2012-05-23 | 34 | 0d |  | NguyenLK; PhongVM; YenTT | 240h |
| 37 | 1.6 | Testing | 3d | 2012-05-23 | 2012-05-28 | 26 | 0d |  | NguyenLK; PhongVM; YenTT | 72h |
